# WBS

Schedule from MS Project, 2011-06-09 to 2014-10-06, costs in €.

## Calendars

- Estándar: Mon-Fri 09:00-13:00, 15:00-19:00; Sat-Sun off.

## Resources

| Resource |
| --- |
| Ing Jorge Valdez |
| Ing Lucas Faule |
| Asistente1 |
| Asistente2 |
| Instalador1 |
| Instalador2 |
| Instalador3 |
| Instalador4 |
| Instalador5 |
| Instalador6 |
| Instalador7 |
| Instalador8 |
| Instalador9 |
| Asistente3 |
| Asistente4 |
| Asistente5 |
| Asistente6 |
| Asistente7 |
| Asistente8 |
| Asistente9 |
| Electricista1 |
| Electricista2 |
| Electricista3 |
| Tecnico1 |
| Tecnico2 |
| Tecnico3 |
| Tecnico4 |
| Tecnico5 |
| Tecnico6 |
| Tecnico7 |
| Tecnico8 |
| Tecnico9 |
| Tecnico10 |
| Configurador1 |
| Configurador2 |
| Jose Chavez |
| Ing Mauricio Diaz |
| Jorge Perez |
| Jo |
| Ing Thompson |
| Ing Herbert Powell |
| Asist. Deposito1 |
| Asist. Deposito2 |
| Asist. Deposito3 |
| Asist. Deposito4 |
| Transportista1 |
| Transportista2 |
| Transportitas3 |
| Alejandra Reinoso |
| Arquitecto |
| Electricista |
| Tecnico |
| PM |
| Inspector1 |
| Inspector2 |
| Inspector3 |
| Inspector4 |
| Inspector5 |
| Inspector6 |
| Ayudante1 |
| Ayudante2 |
| Ayudante3 |
| Ayudante4 |

## Schedule

| ID | WBS | Task | Duration | Start | Finish | Predecessors | Total slack | Free slack | Resources | Work | Cost |
| --- | --- | --- | --- | --- | --- | --- | --- | --- | --- | --- | --- |
| 1 | 1 | **ICCI** | 867.05d | 2011-06-09 | 2014-10-06 |  | 0d |  |  | 101566h | 90,720 |
| 2 | 1.1 | **Planificación y gestión** | 30d | 2011-06-09 | 2011-07-20 |  | 0d |  |  | 600h | 90,720 |
| 3 | 1.1.1 | **Proyecto gestionado** | 30d | 2011-06-09 | 2011-07-20 |  | 0d |  |  | 600h | 90,720 |
| 4 | 1.1.1.1 | Realizar scope statement | 40h | 2011-06-09 | 2011-06-15 |  | 0d |  |  | 40h | 8,960 |
| 5 | 1.1.1.2 | Realizar WBS | 40h | 2011-06-16 | 2011-06-22 | 4 | 1169.25d |  |  | 40h | 5,600 |
| 6 | 1.1.1.3 | Realizar plan de gestión de riesgos | 80h | 2011-06-16 | 2011-06-29 | 4 | 1164.25d |  |  | 400h | 5,600 |
| 7 | 1.1.1.4 | Realizar reuniones de progreso con cliente | 40h | 2011-06-16 | 2011-06-22 | 4 | 1169.25d |  |  | 80h | 3,360 |
| 8 | 1.1.1.5 | Realizar reuniones de progreso internas | 200h | 2011-06-16 | 2011-07-20 | 4 | 1149.25d |  |  | 40h | 67,200 |
| 9 | 1.1.1.6 | Realizar gestion de tiempo | 80h | 2011-06-16 | 2011-06-29 | 4 | 1007.25d | 0d |  |  |  |
| 10 | 1.1.2 | **Personal contratado** | 10d | 2011-06-30 | 2011-07-13 |  | 1007.25d | 0d |  |  |  |
| 11 | 1.1.2.1 | Realizar entrevistas | 40h | 2011-06-30 | 2011-07-06 | 9 | 1007.25d | 0d |  |  |  |
| 12 | 1.1.2.2 | Contratar personal | 40h | 2011-07-07 | 2011-07-13 | 11 | 1007.25d |  |  |  |  |
| 13 | 1.2 | **Centros de capacitación seleccionados** | 36.88d | 2011-06-09 | 2011-07-29 |  | 0d |  |  | 1796.5h |  |
| 14 | 1.2.1 | **Informe de especificaciones y requerimientos generales** | 2.5d | 2011-06-16 | 2011-06-20 | 4 | 0d |  |  | 45.9h |  |
| 15 | 1.2.1.1 | Establecer especificaciones y requerimientos generales | 7h | 2011-06-16 | 2011-06-16 |  | 0d |  | Alejandra Reinoso [85%]; Arquitecto [85%]; Tecnico [85%]; Electricista [85%] | 23.8h |  |
| 16 | 1.2.1.2 | Realizar informe de especificaciones y requerimientos generales | 13h | 2011-06-16 | 2011-06-20 | 15 | 0d |  | Alejandra Reinoso [85%]; PM [85%] | 22.1h |  |
| 17 | 1.2.2 | **Centros de capital seleccionados** | 15.38d | 2011-06-20 | 2011-07-11 | 16 | 14d |  |  | 617.1h |  |
| 18 | 1.2.2.1 | Solicitar los 20 centros definidos por Gobierno | 3h | 2011-06-20 | 2011-06-20 |  | 14d | 0d | Alejandra Reinoso [85%]; PM [85%] | 5.1h |  |
| 19 | 1.2.2.2 | Inspeccionar centros | 120h | 2011-06-20 | 2011-07-11 | 18 | 14d |  | Inspector1 [85%]; Inspector2 [85%]; Inspector3 [85%]; Inspector4 [85%]; Inspector5 [85%]; Inspector6 [85%] | 612h |  |
| 20 | 1.2.3 | **Centros interior seleccionados** | 36.88d | 2011-06-09 | 2011-07-29 |  | 0d |  |  | 1133.5h |  |
| 21 | 1.2.3.1 | **Localidades propuestas** | 13.12d | 2011-06-09 | 2011-06-28 |  | 0d |  |  | 198.5h |  |
| 22 | 1.2.3.1.1 | Solicitar al Gobierno información de colegios del interior | 20h | 2011-06-09 | 2011-06-13 |  | 5d |  | Alejandra Reinoso | 20h |  |
| 23 | 1.2.3.1.2 | Analizar y seleccionar 30 localidades | 40h | 2011-06-20 | 2011-06-27 | 16, 22 | 0d |  | Alejandra Reinoso [85%]; Ayudante1 [85%]; Ayudante2 [85%]; Ayudante3 [85%]; Ayudante4 [85%] | 170h |  |
| 24 | 1.2.3.1.3 | Realizar propuesta de localidades seleccionadas | 5h | 2011-06-27 | 2011-06-28 | 23 | 0d |  | Alejandra Reinoso [85%]; PM [85%] | 8.5h |  |

| ID | WBS | Task | Duration | Start | Finish | Predecessors | Total slack | Resources | Work |
| --- | --- | --- | --- | --- | --- | --- | --- | --- | --- |
| 25 | 1.2.3.2 | **Centros candidatos** | 23.75d | 2011-06-28 | 2011-07-29 | 21 | 0d |  | 935h |
| 26 | 1.2.3.2.1 | Inspeccionar centros seleccionados | 180h | 2011-06-28 | 2011-07-28 |  | 0d | Inspector1 [85%]; Inspector2 [85%]; Inspector3 [85%]; Inspector4 [85%]; Inspector5 [85%]; Inspector6 [85%] | 918h |
| 27 | 1.2.3.2.2 | Notificar selección al colegio | 10h | 2011-07-28 | 2011-07-29 | 26 | 0d | Alejandra Reinoso [85%]; Ayudante1 [85%] | 17h |
| 28 | 1.3 | **Equipamiento comprado** | 17.18d | 2011-07-29 | 2011-08-24 |  | 0d |  | 269.4h |
| 29 | 1.3.1 | **Planificación de requerimientos de compras** | 3.53d | 2011-07-29 | 2011-08-04 |  | 0d |  | 61.4h |
| 30 | 1.3.1.1 | **Políticas de compra establecidas** | 1.18d | 2011-07-29 | 2011-08-02 |  | 0d |  | 43.4h |
| 31 | 1.3.1.1.1 | **Parámetros de costo establecidos** | 1.18d | 2011-07-29 | 2011-08-02 | 13 | 0d |  | 16h |
| 32 | 1.3.1.1.1.1 | Confeccionar parametrización de costo de infraestructura | 9.41h | 2011-07-29 | 2011-08-02 | 13 | 0d | Jose Chavez [85%] | 8h |
| 33 | 1.3.1.1.1.2 | Confeccionar parametrización de costo de mobiliario | 9.41h | 2011-07-29 | 2011-08-02 | 13 | 0d | Jose Chavez [85%] | 8h |
| 34 | 1.3.1.1.2 | Parámetros de disponibilidad establecidos | 9.41h | 2011-07-29 | 2011-08-02 | 13 | 1037.88d | Jose Chavez [85%]; Ing Mauricio Diaz [85%] | 16h |
| 35 | 1.3.1.1.3 | **Parámetros de cantidad establecidos** | 0.59d | 2011-07-29 | 2011-08-01 | 13 | 0.59d |  | 8h |
| 36 | 1.3.1.1.3.1 | Confeccionar parametrización de equipamiento informático | 4.71h | 2011-07-29 | 2011-08-01 | 13 | 0.59d | Jose Chavez [85%] | 4h |
| 37 | 1.3.1.1.3.2 | Confeccionar parametrización de mobiliario | 4.71h | 2011-07-29 | 2011-08-01 | 13 | 0.59d | Jose Chavez [85%] | 4h |
| 38 | 1.3.1.1.4 | Parámetros de garantia establecidos | 2h | 2011-07-29 | 2011-08-01 | 13 | 1038.8d | Jose Chavez [85%]; Ing Mauricio Diaz [85%] | 3.4h |
| 39 | 1.3.1.2 | **Informes técnicos aprobados** | 2.35d | 2011-08-02 | 2011-08-04 | 31, 35 | 0d |  | 18h |
| 40 | 1.3.1.2.1 | Realizar informe de pedido de equipamiento informático | 9.41h | 2011-08-02 | 2011-08-03 |  | 0d | Jose Chavez [85%] | 8h |
| 41 | 1.3.1.2.2 | Realizar informe de pedido de mobiliario | 9.41h | 2011-08-03 | 2011-08-04 | 40 | 0d | Jose Chavez [85%] | 8h |
| 42 | 1.3.1.2.3 | Verificar cobertura de requerimientos | 2.35h | 2011-08-03 | 2011-08-03 | 40 | 0.88d | Jose Chavez [85%] | 2h |
| 43 | 1.3.2 | **Cotizaciones solicitadas** | 8.29d | 2011-08-04 | 2011-08-16 | 39 | 0d |  | 147.2h |
| 44 | 1.3.2.1 | **Pedido de cotización confeccionado** | 5.29d | 2011-08-04 | 2011-08-11 | 39 | 0d |  | 70h |
| 45 | 1.3.2.1.1 | Confeccionar pedido de cotización de hardware | 9.41h | 2011-08-04 | 2011-08-05 | 39 | 4.12d | Jorge Perez [85%] | 8h |
| 46 | 1.3.2.1.2 | Confeccionar pedido de cotización de software | 28.23h | 2011-08-04 | 2011-08-09 | 39 | 1.76d | Jorge Perez [85%] | 24h |
| 47 | 1.3.2.1.3 | Confeccionar pedido de cotización de insumos | 42.35h | 2011-08-04 | 2011-08-11 | 39 | 0d | Jorge Perez [85%] | 36h |
| 48 | 1.3.2.1.4 | Confeccionar pedido de cotización de mobiliario | 2.35h | 2011-08-04 | 2011-08-04 | 39 | 5d | Jorge Perez [85%] | 2h |

| ID | WBS | Task | Duration | Start | Finish | Predecessors | Total slack | Free slack | Resources | Work |
| --- | --- | --- | --- | --- | --- | --- | --- | --- | --- | --- |
| 49 | 1.3.2.2 | **Pedido de cotizaciones enviadas** | 3d | 2011-08-11 | 2011-08-16 | 44 | 0d |  |  | 77.2h |
| 50 | 1.3.2.2.1 | Seleccionar proveedores propuestos | 24h | 2011-08-11 | 2011-08-16 | 44 | 0d |  | Jorge Perez [85%]; Jose Chavez [85%]; Ing Mauricio Diaz [85%] | 61.2h |
| 51 | 1.3.2.2.2 | Enviar pedido de cotización de hardware | 7.06h | 2011-08-11 | 2011-08-12 | 44 | 2.12d |  | Jorge Perez [85%] | 6h |
| 52 | 1.3.2.2.3 | Enviar pedido de cotización de software | 7.06h | 2011-08-11 | 2011-08-12 | 44 | 2.12d |  | Jorge Perez [85%] | 6h |
| 53 | 1.3.2.2.4 | Enviar pedido de cotización de insumos | 2.35h | 2011-08-11 | 2011-08-11 | 44 | 2.71d |  | Jorge Perez [85%] | 2h |
| 54 | 1.3.2.2.5 | Enviar pedido de cotización de mobiliario | 2.35h | 2011-08-11 | 2011-08-11 | 44 | 2.71d |  | Jorge Perez [85%] | 2h |
| 55 | 1.3.3 | **Pedidos realizados** | 5.35d | 2011-08-16 | 2011-08-24 | 43 | 0d |  |  | 60.8h |
| 56 | 1.3.3.1 | **Proveedores seleccionados** | 1.18d | 2011-08-16 | 2011-08-17 | 43 | 0d |  |  | 12h |
| 57 | 1.3.3.1.1 | Realizar evaluación de costos | 9.41h | 2011-08-16 | 2011-08-17 | 43 | 0d |  | Jose Chavez [85%] | 8h |
| 58 | 1.3.3.1.2 | Analizar tiempo de entrega | 2.35h | 2011-08-16 | 2011-08-16 | 43 | 0.88d |  | Jose Chavez [85%] | 2h |
| 59 | 1.3.3.1.3 | Evaluar reputación de proveedor | 2.35h | 2011-08-16 | 2011-08-16 | 43 | 0.88d |  | Jose Chavez [85%] | 2h |
| 60 | 1.3.3.2 | **Pedidos enviados** | 4.18d | 2011-08-17 | 2011-08-24 | 56 | 0d |  |  | 48.8h |
| 61 | 1.3.3.2.1 | Confeccionar ordenes de compra | 9.41h | 2011-08-17 | 2011-08-19 | 59 | 0d |  | Jose Chavez [85%] | 8h |
| 62 | 1.3.3.2.2 | Realizar pedidos de compra a proveedores | 24h | 2011-08-19 | 2011-08-24 | 61 | 0d |  | Jose Chavez [85%]; Jorge Perez [85%] | 40.8h |
| 63 | 1.4 | **Plan de logística** | 173d | 2011-08-24 | 2012-04-23 |  | 0d |  |  | 3140.08h |
| 64 | 1.4.1 | **Depósito alquilado** | 13.5d | 2011-08-24 | 2011-09-12 | 39, 62 | 159.5d | 0d |  | 229.68h |
| 65 | 1.4.1.1 | Confeccionar requerimientos de infraestructura | 4h | 2011-08-24 | 2011-08-24 | 39 | 159.5d | 0d | Ing Thompson | 4h |
| 66 | 1.4.1.2 | Seleccionar depósito | 24h | 2011-08-24 | 2011-08-29 | 65 | 159.5d | 0d | Ing Thompson [85%]; Asist. Deposito1 [85%]; Asist. Deposito2 [85%] | 49.68h |
| 67 | 1.4.1.3 | Alquilar depósito | 80h | 2011-08-29 | 2011-09-12 | 66 | 159.5d |  | Ing Thompson [85%]; Asist. Deposito1 [85%] | 136h |
| 68 | 1.4.1.4 | Contratar servicio de seguridad | 40h | 2011-08-29 | 2011-09-05 | 66 | 164.5d |  | Ing Thompson | 40h |
| 69 | 1.4.2 | **Equipamientos y materiales recibidos** | 40d | 2011-08-24 | 2011-10-19 | 62 | 0d |  |  | 884h |
| 70 | 1.4.2.1 | Recibir equipamientos y materiales | 160h | 2011-08-24 | 2011-09-21 |  | 0d |  | Ing Thompson [85%]; Asist. Deposito1 [85%]; Asist. Deposito2 [85%]; Asist. Deposito3 [85%] | 544h |
| 71 | 1.4.2.2 | Controlar equipamientos y materiales | 40h | 2011-09-21 | 2011-09-28 | 70 | 0d |  | Asist. Deposito1 [85%]; Ing Herbert Powell [85%] | 68h |
| 72 | 1.4.2.3 | Catalogar equipamientos y materiales | 80h | 2011-09-28 | 2011-10-12 | 71 | 0d |  | Asist. Deposito1 [85%]; Asist. Deposito2 [85%]; Ing Herbert Powell [85%] | 204h |
| 73 | 1.4.2.4 | Almacenar equipamientos y materiales | 40h | 2011-10-12 | 2011-10-19 | 72 | 0d |  | Asist. Deposito1 [85%]; Ing Herbert Powell [85%] | 68h |

| ID | WBS | Task | Duration | Start | Finish | Predecessors | Total slack | Free slack | Resources | Work |
| --- | --- | --- | --- | --- | --- | --- | --- | --- | --- | --- |
| 74 | 1.4.3 | **Embalaje realizado** | 23d | 2011-10-19 | 2011-11-21 | 69 | 0d |  |  | 258.4h |
| 75 | 1.4.3.1 | Seleccionar equipos | 40h | 2011-10-19 | 2011-10-26 | 69 | 0d |  | Ing Herbert Powell [85%]; Asist. Deposito1 [85%] | 68h |
| 76 | 1.4.3.2 | Asignar centro educativo | 24h | 2011-10-26 | 2011-10-31 | 75 | 0d |  | Asist. Deposito1 [85%] | 20.4h |
| 77 | 1.4.3.3 | Embalar equipamiento | 80h | 2011-10-31 | 2011-11-14 | 76 | 0d |  | Asist. Deposito1 [85%]; Asist. Deposito2 [85%] | 136h |
| 78 | 1.4.3.4 | Controlar equipamiento | 40h | 2011-11-14 | 2011-11-21 | 77 | 750d |  | Asist. Deposito1 [85%] | 34h |
| 79 | 1.4.4 | **Equipamientos y materiales entregados** | 115d | 2011-11-14 | 2012-04-23 | 77 | 0d |  |  | 1768h |
| 80 | 1.4.4.1 | Seleccionar servicio de transporte | 40h | 2011-11-14 | 2011-11-21 | 77 | 0d |  | Ing Herbert Powell [85%]; Asist. Deposito1 [85%] | 68h |
| 81 | 1.4.4.2 | **Hoja de ruta definida** | 15d | 2011-11-21 | 2011-12-12 | 80 | 0d |  |  | 102h |
| 82 | 1.4.4.2.1 | Confeccionar hoja de ruta | 80h | 2011-11-21 | 2011-12-05 | 80 | 0d |  | Ing Herbert Powell [85%] | 68h |
| 83 | 1.4.4.2.2 | Gestionar hoja de ruta | 40h | 2011-12-05 | 2011-12-12 | 82 | 0d |  | Ing Herbert Powell [85%] | 34h |
| 84 | 1.4.4.3 | Cargar equipamiento y materiales | 120h | 2011-12-12 | 2012-01-02 | 81 | 0d |  | Asist. Deposito1 [85%]; Asist. Deposito2 [85%] | 204h |
| 85 | 1.4.4.4 | Transportar equipamientos y materiales | 400h | 2012-01-02 | 2012-03-12 | 84 | 0d |  | Transportista1 [85%]; Transportista2 [85%]; Transportitas3 [85%] | 1020h |
| 86 | 1.4.4.5 | Descargar equipamientos y materiales | 200h | 2012-03-12 | 2012-04-16 | 85 | 0d |  | Asist. Deposito1 [85%]; Asist. Deposito2 [85%] | 340h |
| 87 | 1.4.4.6 | Controlar equipamientos y materiales | 40h | 2012-04-16 | 2012-04-23 | 86 | 0d |  | Asist. Deposito1 [85%] | 34h |
| 88 | 1.5 | **Centros de capacitación instalados** | 799.5d | 2011-09-12 | 2014-10-06 | 64 | 0d |  |  | 95759.7h |
| 89 | 1.5.1 | **Equipos informáticos configurados** | 230.38d | 2011-09-12 | 2012-07-30 | 64 | 569.12d |  |  | 11071.7h |
| 90 | 1.5.1.1 | Montar infraestructura del laboratorio | 5h | 2011-09-12 | 2011-09-13 |  | 595d | 25.88d | Ing Jorge Valdez [85%]; Asistente1 [85%]; Asistente2 [85%] | 12.75h |
| 91 | 1.5.1.2 | **Servidores configurados** | 23.62d | 2011-10-19 | 2011-11-21 | 69, 90 | 749.38d |  |  | 563.4h |
| 92 | 1.5.1.2.1 | Preparar paquete de software | 1h | 2011-10-19 | 2011-10-19 | 69, 90 | 749.38d | 0d | Ing Lucas Faule | 1h |
| 93 | 1.5.1.2.2 | Instalar paquete de software | 16h | 2011-10-19 | 2011-10-21 | 92 | 749.38d | 0d | Ing Lucas Faule | 16h |
| 94 | 1.5.1.2.3 | Testear servidor | 16h | 2011-10-21 | 2011-10-25 | 93 | 749.38d | 0d | Ing Lucas Faule | 16h |
| 95 | 1.5.1.2.4 | Clonar servidores | 156h | 2011-10-25 | 2011-11-21 | 94 | 749.38d |  | Ing Lucas Faule [85%]; Instalador1 [85%]; Instalador2 [85%]; Instalador3 [85%] | 530.4h |
| 96 | 1.5.1.3 | **PC's configuradas** | 203.88d | 2011-10-19 | 2012-07-30 | 69, 90 | 569.12d |  |  | 10495.6h |
| 97 | 1.5.1.3.1 | Preparar paquete de software | 1h | 2011-10-19 | 2011-10-19 | 69, 90 | 569.12d | 0d | Ing Lucas Faule | 1h |
| 98 | 1.5.1.3.2 | Instalar paquete de software | 16h | 2011-10-19 | 2011-10-21 | 97 | 569.12d | 0d | Ing Lucas Faule | 16h |
| 99 | 1.5.1.3.3 | Testear PC | 16h | 2011-10-21 | 2011-10-25 | 98 | 569.12d | 0d | Ing Lucas Faule | 16h |
| 100 | 1.5.1.3.4 | Clonar PC's | 1598h | 2011-10-25 | 2012-07-30 | 99 | 569.12d |  | Ing Lucas Faule; Instalador1 [85%]; Instalador2 [85%]; Instalador3 [85%]; Instalador4 [85%]; Instalador5 [85%]; Instalador6 [85%]; Instalador7 [85%]; Instalador8 [85%]; Instalador9 [85%] | 10462.6h |

| ID | WBS | Task | Duration | Start | Finish | Predecessors | Total slack | Free slack | Resources | Work |
| --- | --- | --- | --- | --- | --- | --- | --- | --- | --- | --- |
| 101 | 1.5.2 | **Infraestructura instalada** | 640d | 2012-04-23 | 2014-10-06 | 79 | 0d |  |  | 84688h |
| 102 | 1.5.2.1 | Montar mobiliario | 4800h | 2012-04-23 | 2014-08-11 |  | 0d |  | Ing Jorge Valdez [85%]; Asistente1 [85%]; Asistente2 [85%]; Asistente3 [85%]; Asistente4 [85%]; Asistente5 [85%]; Asistente6 [85%]; Asistente7 [85%]; Asistente8 [85%]; Asistente9 [85%] | 40800h |
| 103 | 1.5.2.2 | Realizar instalación eléctrica | 960h | 2012-04-23 | 2012-10-08 |  | 480d |  | Electricista1 [85%]; Electricista2 [85%]; Electricista3 [85%] | 2448h |
| 104 | 1.5.2.3 | Realizar cableado estructurado | 4800h | 2012-04-23 | 2014-08-11 |  | 0d |  | Tecnico1 [85%]; Tecnico2 [85%]; Tecnico3 [85%]; Tecnico4 [85%]; Tecnico5 [85%]; Tecnico6 [85%]; Tecnico7 [85%]; Tecnico8 [85%]; Tecnico9 [85%]; Tecnico10 [85%] | 40800h |
| 105 | 1.5.2.4 | Instalación y configuración de acceso a internet | 320h | 2014-08-11 | 2014-10-06 | 102, 103, 104 | 0d |  | Configurador1 | 320h |
| 106 | 1.5.2.5 | Configuración de equipos informáticos en red de datos | 320h | 2014-08-11 | 2014-10-06 | 102, 103, 104 | 0d |  | Configurador2 | 320h |
| 107 | 1.6 | **Docentes capacitados** | 177d | 2011-07-14 | 2012-03-16 |  | 873.93d |  |  |  |
| 108 | 1.6.1 | **Capacitadores seleccionados** | 21d | 2011-07-14 | 2011-08-11 | 10 | 872.75d | 0d |  |  |
| 109 | 1.6.1.1 | Confeccionar método de selección | 8h | 2011-07-14 | 2011-07-14 |  | 872.75d | 0d |  |  |
| 110 | 1.6.1.2 | Comunicar a instituciones educativas | 80h | 2011-07-15 | 2011-07-28 | 109 | 872.75d | 0d |  |  |
| 111 | 1.6.1.3 | Evaluar capacitadores | 80h | 2011-07-29 | 2011-08-11 | 110 | 872.75d |  |  |  |
| 112 | 1.6.2 | **Programa de contenidos** | 16d | 2011-08-12 | 2011-09-02 | 108 | 872.75d | 0d |  |  |
| 113 | 1.6.2.1 | Definir objetivos específicos | 8h | 2011-08-12 | 2011-08-12 |  | 872.75d | 0d |  |  |
| 114 | 1.6.2.2 | Confeccionar temario | 8h | 2011-08-15 | 2011-08-15 | 113 | 872.75d | 0d |  |  |
| 115 | 1.6.2.3 | Confeccionar actividades | 16h | 2011-08-16 | 2011-08-17 | 114 | 872.75d | 0d |  |  |
| 116 | 1.6.2.4 | Establecer duración y método de capacitación | 8h | 2011-08-18 | 2011-08-18 | 115 | 872.75d | 0d |  |  |
| 117 | 1.6.2.5 | Definir material de estudio | 8h | 2011-08-19 | 2011-08-19 | 116 | 872.75d | 0d |  |  |
| 118 | 1.6.2.6 | Gestionar material de estudio | 80h | 2011-08-22 | 2011-09-02 | 117 | 872.75d |  |  |  |
| 119 | 1.6.3 | **Docentes seleccionados** | 21d | 2011-07-29 | 2011-08-29 | 13 | 878.05d | 4.12d |  |  |
| 120 | 1.6.3.1 | Confeccionar perfil del docente | 8h | 2011-07-29 | 2011-08-01 |  | 878.05d | 0d |  |  |
| 121 | 1.6.3.2 | Comunicar perfil a escuelas | 80h | 2011-08-01 | 2011-08-15 | 120 | 878.05d | 0d |  |  |
| 122 | 1.6.3.3 | Evaluar docentes | 80h | 2011-08-15 | 2011-08-29 | 121 | 878.05d |  |  |  |
| 123 | 1.6.4 | **Capacitación docente** | 140d | 2011-09-05 | 2012-03-16 | 112, 119 | 873.93d |  |  |  |
| 124 | 1.6.4.1 | **Capacitación centralizada** | 25d | 2011-09-05 | 2011-10-07 |  | 988.93d |  |  |  |
| 125 | 1.6.4.1.1 | Construir cronograma de llegada y estadía de docentes | 40h | 2011-09-05 | 2011-09-09 |  | 988.93d | 0d |  |  |
| 126 | 1.6.4.1.2 | Preparar alojamiento de los docentes | 80h | 2011-09-12 | 2011-09-23 | 125 | 988.93d | 0d |  |  |
| 127 | 1.6.4.1.3 | Coordinar llegada de docentes | 32h | 2011-09-26 | 2011-09-29 | 126 | 988.93d | 0d |  |  |
| 128 | 1.6.4.1.4 | Dictar capacitación | 40h | 2011-09-30 | 2011-10-06 | 127 | 988.93d | 0d |  |  |
| 129 | 1.6.4.1.5 | Plantear plan de acción a implementar | 8h | 2011-10-07 | 2011-10-07 | 128 | 988.93d |  |  |  |

| ID | WBS | Task | Duration | Start | Finish | Predecessors | Total slack | Free slack |
| --- | --- | --- | --- | --- | --- | --- | --- | --- |
| 130 | 1.6.4.2 | **Capacitación itinerante** | 140d | 2011-09-05 | 2012-03-16 |  | 873.93d |  |
| 131 | 1.6.4.2.1 | Coordinar cronograma de visitas | 240h | 2011-09-05 | 2011-10-14 | 13 | 873.93d | 0d |
| 132 | 1.6.4.2.2 | Gestionar visita de los capacitadores | 240h | 2011-10-17 | 2011-11-25 | 131 | 873.93d | 0d |
| 133 | 1.6.4.2.3 | Dictar capacitación | 320h | 2011-11-28 | 2012-01-20 | 132 | 873.93d | 0d |
| 134 | 1.6.4.2.4 | Presentar plan de acción | 320h | 2012-01-23 | 2012-03-16 | 133 | 873.93d |  |
