# WBS

Schedule from MS Project, 2011-06-09 to 2012-01-24, costs in €.

## Calendars

- Estándar: Mon-Fri 09:00-13:00, 15:00-19:00; Sat-Sun off.

## Resources

| Resource |
| --- |
| Asistente Instalacion1 |
| Asistente Instalacion2 |
| Asistente Instalacion3 |
| Asistente Instalacion4 |
| Asistente Instalacion5 |
| Asistente Instalacion6 |
| Asistente Instalacion7 |
| Asistente Instalacion8 |
| Asistente Instalacion9 |
| Jose Chavez |
| Ing Mauricio Diaz |
| Jorge Perez |
| Ing Thompson |
| Ing Herbert Powell |
| Asist. Deposito1 |
| Asist. Deposito2 |
| Asist. Deposito3 |
| Asist. Deposito4 |
| Transportista1 |
| Transportista2 |
| Transportitas3 |
| Alejandra Reinoso |
| Selección Elec1 |
| Tecnico Selección |
| PM |
| Selección Inspector1 |
| Selección Inspector2 |
| Selección Inspector3 |
| Selección Inspector4 |
| Selección Inspector5 |
| Selección Inspector6 |
| Selección Ayud1 |
| Selección Ayud2 |
| Selección Ayud3 |
| Selección Ayud4 |
| Arquitecto Selección |
| Asistente Instalacion10 |
| Asistente Instalacion11 |
| Asistente Instalacion12 |
| Asistente Instalacion13 |
| Asistente Instalacion14 |
| Asistente Instalacion15 |
| Asistente Instalacion16 |
| Asistente Instalacion17 |
| Asistente Instalacion18 |
| Asistente Instalacion19 |
| Asistente Instalacion20 |
| Transportitas4 |
| Transportista3 |
| Transportista4 |
| Transportista5 |
| Transportista6 |
| Tecnico Instalacion 01 |
| Tecnico Instalacion 02 |
| Tecnico Instalacion 03 |
| Tecnico Instalacion 04 |
| Tecnico Instalacion 05 |
| Tecnico Instalacion 06 |
| Tecnico Instalacion 07 |
| Tecnico Instalacion 08 |
| Tecnico Instalacion 09 |
| Tecnico Instalacion 10 |
| Electricista Instalacion2 |
| Electricista Instalacion3 |
| Electricista Instalacion4 |
| Electricista Instalacion5 |
| Electricista Instalacion6 |
| Electricista Instalacion7 |
| Electricista Instalacion8 |
| Electricista Instalacion9 |
| Electricista Instalacion10 |
| Capacitador1 |
| Capacitador2 |
| Capacitador3 |
| Capacitador4 |
| Organizador1 |
| Organizador2 |
| Organizador3 |
| Coordinador1 |
| Coordinador2 |
| Coordinador3 |
| Coordinador4 |
| Coordinador5 |
| Asist. Deposito5 |
| Asistente Gestion1 |
| Asistente Gestion2 |
| Asistente Gestion3 |
| Asistente Gestion4 |
| Asistente Compra Hardware |
| Asistente Compra Software |
| Asistente Compra Mobiliario |
| Asistente Compra Insumos |
| Selección Inspector7 |
| Selección Inspector8 |
| Selección Inspector9 |
| Selección Inspector10 |
| Selección Inspector11 |
| Selección Inspector12 |
| Selección Inspector13 |
| Selección Inspector14 |
| Selección Inspector15 |
| Selección Inspector16 |
| Selección Inspector20 |
| Selección Inspector19 |
| Selección Inspector18 |
| Selección Inspector17 |
| Electricista Instalacion1 |

## Schedule

| ID | WBS | Task | Duration | Start | Finish | Predecessors | Total slack | Free slack | Resources | Work | Cost |
| --- | --- | --- | --- | --- | --- | --- | --- | --- | --- | --- | --- |
| 1 | 1 | **ICCI** | 163.09d | 2011-06-09 | 2012-01-24 |  | 0d |  |  | 11895h | 90,720 |
| 2 | 1.1 | **Planificación y gestión** | 46.67d | 2011-06-09 | 2011-08-12 |  | 0d |  |  | 760h | 90,720 |
| 3 | 1.1.1 | **Proyecto gestionado** | 36.67d | 2011-06-09 | 2011-07-29 |  | 0d |  |  | 680h | 90,720 |
| 4 | 1.1.1.1 | Realizar scope statement | 40h | 2011-06-09 | 2011-06-15 |  | 0d |  | PM | 40h | 8,960 |
| 5 | 1.1.1.2 | Realizar WBS | 13.33h | 2011-06-16 | 2011-06-17 | 4 | 31.92d | 0d | PM; Asistente Gestion1; Asistente Gestion2 | 40h | 5,600 |
| 6 | 1.1.1.3 | Realizar plan de gestión de riesgos | 80h | 2011-06-17 | 2011-07-01 | 5 | 31.92d | 0d | PM; Asistente Gestion1; Asistente Gestion2; Asistente Gestion3; Asistente Gestion4 | 400h | 5,600 |
| 7 | 1.1.1.4 | Realizar reuniones de progreso con cliente | 40h | 2011-07-01 | 2011-07-08 | 6 | 31.92d | 0d | PM; Asistente Gestion1 | 80h | 3,360 |
| 8 | 1.1.1.5 | Realizar reuniones de progreso internas | 40h | 2011-07-08 | 2011-07-15 | 7 | 31.92d | 0d | PM | 40h | 67,200 |
| 9 | 1.1.1.6 | Realizar gestion de tiempo | 80h | 2011-07-15 | 2011-07-29 | 8 | 31.92d | 0d | PM | 80h |  |
| 10 | 1.1.2 | **Personal contratado** | 10d | 2011-07-29 | 2011-08-12 |  | 31.92d | 0d |  | 80h |  |
| 11 | 1.1.2.1 | Realizar entrevistas | 40h | 2011-07-29 | 2011-08-05 | 9 | 31.92d | 0d | PM | 40h |  |
| 12 | 1.1.2.2 | Contratar personal | 40h | 2011-08-05 | 2011-08-12 | 11 | 31.92d |  | PM | 40h |  |
| 13 | 1.2 | **Centros de capacitación seleccionados** | 12.88d | 2011-06-09 | 2011-06-27 |  | 0d |  |  | 427h |  |
| 14 | 1.2.1 | **Informe de especificaciones y requerimientos generales** | 2.5d | 2011-06-16 | 2011-06-20 | 4 | 0d |  |  | 34h |  |
| 15 | 1.2.1.1 | Establecer especificaciones y requerimientos generales | 7h | 2011-06-16 | 2011-06-16 |  | 0d |  | Arquitecto Selección; Selección Elec1; Tecnico Selección | 21h |  |
| 16 | 1.2.1.2 | Realizar informe de especificaciones y requerimientos generales | 13h | 2011-06-16 | 2011-06-20 | 15 | 0d |  | Alejandra Reinoso | 13h |  |
| 17 | 1.2.2 | **Centros de capital seleccionados** | 1.88d | 2011-06-20 | 2011-06-22 | 16 | 3.5d |  |  | 123h |  |
| 18 | 1.2.2.1 | Solicitar los 20 centros definidos por Gobierno | 3h | 2011-06-20 | 2011-06-20 |  | 3.5d | 0d | Alejandra Reinoso | 3h |  |
| 19 | 1.2.2.2 | Inspeccionar centros | 12h | 2011-06-20 | 2011-06-22 | 18 | 3.5d |  | Selección Inspector1; Selección Inspector2; Selección Inspector3; Selección Inspector4; Selección Inspector5; Selección Inspector6; Selección Inspector7; Selección Inspector8; Selección Inspector9; Selección Inspector10 | 120h |  |
| 20 | 1.2.3 | **Centros interior seleccionados** | 12.88d | 2011-06-09 | 2011-06-27 |  | 0d |  |  | 270h |  |
| 21 | 1.2.3.1 | **Localidades propuestas** | 9.38d | 2011-06-09 | 2011-06-22 |  | 0d |  |  | 70h |  |
| 22 | 1.2.3.1.1 | Solicitar al Gobierno información de colegios del interior | 20h | 2011-06-09 | 2011-06-13 |  | 5d |  | Alejandra Reinoso | 20h |  |
| 23 | 1.2.3.1.2 | Analizar y seleccionar 30 localidades | 10h | 2011-06-20 | 2011-06-21 | 16, 22 | 0d |  | Selección Ayud1; Selección Ayud2; Selección Ayud3; Selección Ayud4 | 40h |  |
| 24 | 1.2.3.1.3 | Realizar propuesta de localidades seleccionadas | 5h | 2011-06-21 | 2011-06-22 | 23 | 0d |  | Alejandra Reinoso; PM | 10h |  |

| ID | WBS | Task | Duration | Start | Finish | Predecessors | Total slack | Resources | Work |
| --- | --- | --- | --- | --- | --- | --- | --- | --- | --- |
| 25 | 1.2.3.2 | **Centros candidatos** | 3.5d | 2011-06-22 | 2011-06-27 | 21 | 0d |  | 200h |
| 26 | 1.2.3.2.1 | Inspeccionar centros seleccionados | 18h | 2011-06-22 | 2011-06-24 |  | 0d | Selección Inspector11; Selección Inspector12; Selección Inspector13; Selección Inspector14; Selección Inspector15; Selección Inspector16; Selección Inspector17; Selección Inspector18; Selección Inspector19; Selección Inspector20 | 180h |
| 27 | 1.2.3.2.2 | Notificar selección al colegio | 10h | 2011-06-24 | 2011-06-27 | 26 | 0d | Alejandra Reinoso; Selección Ayud1 | 20h |
| 28 | 1.3 | **Equipamiento comprado** | 17d | 2011-06-27 | 2011-07-20 |  | 0d |  | 304h |
| 29 | 1.3.1 | **Planificación de requerimientos de compras** | 4d | 2011-06-27 | 2011-07-01 |  | 0d |  | 62h |
| 30 | 1.3.1.1 | **Políticas de compra establecidas** | 2d | 2011-06-27 | 2011-06-29 |  | 0d |  | 44h |
| 31 | 1.3.1.1.1 | **Parámetros de costo establecidos** | 2d | 2011-06-27 | 2011-06-29 | 13 | 0d |  | 32h |
| 32 | 1.3.1.1.1.1 | Confeccionar parametrización de costo de infraestructura | 2.67h | 2011-06-27 | 2011-06-28 | 13 | 1.67d | Asistente Compra Hardware; Asistente Compra Software; Asistente Compra Insumos | 8h |
| 33 | 1.3.1.1.1.2 | Confeccionar parametrización de costo de mobiliario | 8h | 2011-06-27 | 2011-06-28 | 13 | 1d | Asistente Compra Mobiliario | 8h |
| 34 | 1.3.1.1.1.3 | Parámetros de disponibilidad establecidos | 16h | 2011-06-27 | 2011-06-29 | 13 | 0d | Ing Mauricio Diaz | 16h |
| 35 | 1.3.1.1.2 | **Parámetros de cantidad establecidos** | 0.5d | 2011-06-27 | 2011-06-28 | 13 | 1.5d |  | 12h |
| 36 | 1.3.1.1.2.1 | Confeccionar parametrización de equipamiento informático | 4h | 2011-06-27 | 2011-06-28 | 13 | 1.5d | Asistente Compra Hardware | 4h |
| 37 | 1.3.1.1.2.2 | Confeccionar parametrización de mobiliario | 4h | 2011-06-27 | 2011-06-28 | 13 | 1.5d | Asistente Compra Mobiliario | 4h |
| 38 | 1.3.1.1.2.3 | Parámetros de garantia establecidos | 4h | 2011-06-27 | 2011-06-28 | 13 | 1.5d | Ing Mauricio Diaz | 4h |
| 39 | 1.3.1.2 | **Informes técnicos aprobados** | 2d | 2011-06-29 | 2011-07-01 | 31, 35 | 0d |  | 18h |
| 40 | 1.3.1.2.1 | Realizar informe de pedido de equipamiento informático | 8h | 2011-06-29 | 2011-06-30 |  | 0d | Asistente Compra Hardware | 8h |
| 41 | 1.3.1.2.2 | Realizar informe de pedido de mobiliario | 8h | 2011-06-30 | 2011-07-01 | 40 | 0d | Asistente Compra Mobiliario | 8h |
| 42 | 1.3.1.2.3 | Verificar cobertura de requerimientos | 2h | 2011-06-30 | 2011-07-01 | 40 | 0.75d | Jose Chavez | 2h |
| 43 | 1.3.2 | **Cotizaciones solicitadas** | 7.5d | 2011-07-01 | 2011-07-13 | 39 | 0d |  | 174h |
| 44 | 1.3.2.1 | **Pedido de cotización confeccionado** | 4.5d | 2011-07-01 | 2011-07-08 | 39 | 0d |  | 86h |
| 45 | 1.3.2.1.1 | Confeccionar pedido de cotización de hardware | 24h | 2011-07-01 | 2011-07-06 | 39 | 1.5d | Asistente Compra Hardware | 24h |
| 46 | 1.3.2.1.2 | Confeccionar pedido de cotización de software | 24h | 2011-07-01 | 2011-07-06 | 39 | 1.5d | Asistente Compra Software | 24h |
| 47 | 1.3.2.1.3 | Confeccionar pedido de cotización de insumos | 36h | 2011-07-01 | 2011-07-08 | 39 | 0d | Asistente Compra Insumos | 36h |
| 48 | 1.3.2.1.4 | Confeccionar pedido de cotización de mobiliario | 2h | 2011-07-01 | 2011-07-04 | 39 | 4.25d | Asistente Compra Mobiliario | 2h |

| ID | WBS | Task | Duration | Start | Finish | Predecessors | Total slack | Resources | Work |
| --- | --- | --- | --- | --- | --- | --- | --- | --- | --- |
| 49 | 1.3.2.2 | **Pedido de cotizaciones enviadas** | 3d | 2011-07-08 | 2011-07-13 | 44 | 0d |  | 88h |
| 50 | 1.3.2.2.1 | Seleccionar proveedores propuestos | 24h | 2011-07-08 | 2011-07-13 | 44 | 0d | Jose Chavez; Jorge Perez; Ing Mauricio Diaz | 72h |
| 51 | 1.3.2.2.2 | Enviar pedido de cotización de hardware | 6h | 2011-07-08 | 2011-07-11 | 44 | 2.25d | Asistente Compra Hardware | 6h |
| 52 | 1.3.2.2.3 | Enviar pedido de cotización de software | 6h | 2011-07-08 | 2011-07-11 | 44 | 2.25d | Asistente Compra Software | 6h |
| 53 | 1.3.2.2.4 | Enviar pedido de cotización de insumos | 2h | 2011-07-08 | 2011-07-08 | 44 | 2.75d | Asistente Compra Insumos | 2h |
| 54 | 1.3.2.2.5 | Enviar pedido de cotización de mobiliario | 2h | 2011-07-08 | 2011-07-08 | 44 | 2.75d | Asistente Compra Mobiliario | 2h |
| 55 | 1.3.3 | **Pedidos realizados** | 5.5d | 2011-07-13 | 2011-07-20 | 43 | 0d |  | 68h |
| 56 | 1.3.3.1 | **Proveedores seleccionados** | 1.5d | 2011-07-13 | 2011-07-14 | 43 | 0d |  | 12h |
| 57 | 1.3.3.1.1 | Realizar evaluación de costos | 8h | 2011-07-13 | 2011-07-14 | 43 | 0d | Jose Chavez | 8h |
| 58 | 1.3.3.1.2 | Analizar tiempo de entrega | 2h | 2011-07-14 | 2011-07-14 | 57 | 0d | Jose Chavez | 2h |
| 59 | 1.3.3.1.3 | Evaluar reputación de proveedor | 2h | 2011-07-14 | 2011-07-14 | 58 | 0d | Jose Chavez | 2h |
| 60 | 1.3.3.2 | **Pedidos enviados** | 4d | 2011-07-14 | 2011-07-20 | 56 | 0d |  | 56h |
| 61 | 1.3.3.2.1 | Confeccionar ordenes de compra | 8h | 2011-07-14 | 2011-07-15 | 59 | 0d | Jose Chavez | 8h |
| 62 | 1.3.3.2.2 | Realizar pedidos de compra a proveedores | 24h | 2011-07-15 | 2011-07-20 | 61 | 0d | Jorge Perez; Jose Chavez | 48h |
| 63 | 1.4 | **Plan de logística** | 113.21d | 2011-07-20 | 2011-12-27 |  | 0d |  | 4028h |
| 64 | 1.4.1 | **Depósito alquilado** | 8.5d | 2011-07-20 | 2011-08-02 | 39, 62 | 0d |  | 252h |
| 65 | 1.4.1.1 | Confeccionar requerimientos de infraestructura | 4h | 2011-07-20 | 2011-07-21 | 39 | 0d | Ing Thompson | 4h |
| 66 | 1.4.1.2 | Seleccionar depósito | 24h | 2011-07-21 | 2011-07-26 | 65 | 0d | Asist. Deposito1; Asist. Deposito2 | 48h |
| 67 | 1.4.1.3 | Alquilar depósito | 40h | 2011-07-26 | 2011-08-02 | 66 | 0d | Asist. Deposito1; Asist. Deposito2; Asist. Deposito3; Asist. Deposito4 | 160h |
| 68 | 1.4.1.4 | Contratar servicio de seguridad | 40h | 2011-07-26 | 2011-08-02 | 66 | 0d | Ing Thompson | 40h |
| 69 | 1.4.2 | **Equipamientos y materiales recibidos** | 40d | 2011-08-02 | 2011-09-27 | 64 | 0d |  | 960h |
| 70 | 1.4.2.1 | Recibir equipamientos y materiales | 160h | 2011-08-02 | 2011-08-30 |  | 0d | Asist. Deposito1; Asist. Deposito2; Asist. Deposito3; Asist. Deposito4 | 640h |
| 71 | 1.4.2.2 | Controlar equipamientos y materiales | 40h | 2011-08-30 | 2011-09-06 | 70 | 0d | Asist. Deposito1; Asist. Deposito2 | 80h |
| 72 | 1.4.2.3 | Catalogar equipamientos y materiales | 80h | 2011-09-06 | 2011-09-20 | 71 | 0d | Asist. Deposito1; Asist. Deposito2 | 160h |
| 73 | 1.4.2.4 | Almacenar equipamientos y materiales | 40h | 2011-09-20 | 2011-09-27 | 72 | 0d | Asist. Deposito1; Asist. Deposito2 | 80h |

| ID | WBS | Task | Duration | Start | Finish | Predecessors | Total slack | Free slack | Resources | Work |
| --- | --- | --- | --- | --- | --- | --- | --- | --- | --- | --- |
| 74 | 1.4.3 | **Equipos informáticos configurados** | 54.11d | 2011-08-02 | 2011-10-17 |  | 0d |  |  | 1209h |
| 75 | 1.4.3.1 | Montar infraestructura del laboratorio | 16h | 2011-08-02 | 2011-08-04 | 64 | 38d |  | Asistente Instalacion1; Asistente Instalacion2 | 32h |
| 76 | 1.4.3.2 | **Servidores configurados** | 8.03d | 2011-09-27 | 2011-10-07 |  | 6.09d |  |  | 345h |
| 77 | 1.4.3.2.1 | Preparar paquete de software | 1h | 2011-09-27 | 2011-09-27 | 69, 75 | 6.09d | 0d | Asistente Instalacion1 | 1h |
| 78 | 1.4.3.2.2 | Instalar paquete de software | 16h | 2011-09-27 | 2011-09-29 | 77 | 6.09d | 0d | Asistente Instalacion1 | 16h |
| 79 | 1.4.3.2.3 | Testear servidor | 16h | 2011-09-29 | 2011-10-03 | 78 | 6.09d | 0d | Asistente Instalacion1 | 16h |
| 80 | 1.4.3.2.4 | Clonar servidores | 31.2h | 2011-10-03 | 2011-10-07 | 79 | 6.09d |  | Asistente Instalacion1; Asistente Instalacion2; Asistente Instalacion3; Asistente Instalacion4; Asistente Instalacion5; Asistente Instalacion6; Asistente Instalacion7; Asistente Instalacion8; Asistente Instalacion9; Asistente Instalacion10 | 312h |
| 81 | 1.4.3.3 | **PC's configuradas** | 14.11d | 2011-09-27 | 2011-10-17 |  | 0d |  |  | 832h |
| 82 | 1.4.3.3.1 | Preparar paquete de software | 1h | 2011-09-27 | 2011-09-27 | 69, 75 | 0d |  | Asistente Instalacion11 | 1h |
| 83 | 1.4.3.3.2 | Instalar paquete de software | 16h | 2011-09-27 | 2011-09-29 | 82 | 0d |  | Asistente Instalacion12 | 16h |
| 84 | 1.4.3.3.3 | Testear PC | 16h | 2011-09-29 | 2011-10-03 | 83 | 0d |  | Asistente Instalacion11 | 16h |
| 85 | 1.4.3.3.4 | Clonar PC's | 79.9h | 2011-10-03 | 2011-10-17 | 84 | 0d |  | Asistente Instalacion11; Asistente Instalacion12; Asistente Instalacion13; Asistente Instalacion14; Asistente Instalacion15; Asistente Instalacion16; Asistente Instalacion17; Asistente Instalacion18; Asistente Instalacion19; Asistente Instalacion20 | 799h |
| 86 | 1.4.4 | **Embalaje realizado** | 21.61d | 2011-09-27 | 2011-10-26 |  | 14.11d |  |  | 368h |
| 87 | 1.4.4.1 | **Seleccionar equipos** | 2.5d | 2011-09-27 | 2011-09-29 |  | 80.71d |  |  | 80h |
| 88 | 1.4.4.1.1 | Seleccionar equipos Capital (20 centros) | 20h | 2011-09-27 | 2011-09-29 | 69 | 80.71d | 0d | Asist. Deposito1; Asist. Deposito2 | 40h |
| 89 | 1.4.4.1.2 | Seleccionar equipos Interior (20 centros) | 20h | 2011-09-27 | 2011-09-29 | 69 | 80.71d | 0d | Asist. Deposito3; Asist. Deposito4 | 40h |
| 90 | 1.4.4.2 | **Asignar centro educativo** | 1.5d | 2011-09-29 | 2011-10-03 |  | 80.71d |  |  | 48h |
| 91 | 1.4.4.2.1 | Asignar centro educativo Capital (20 centros) | 12h | 2011-09-29 | 2011-10-03 | 88 | 80.71d |  | Asist. Deposito1; Asist. Deposito2 | 24h |
| 92 | 1.4.4.2.2 | Asignar centro educativo Interior (20 centros) | 12h | 2011-09-29 | 2011-10-03 | 89 | 80.71d |  | Asist. Deposito3; Asist. Deposito4 | 24h |
| 93 | 1.4.4.3 | **Embalar equipamiento** | 5d | 2011-10-17 | 2011-10-24 |  | 0d |  |  | 160h |
| 94 | 1.4.4.3.1 | Embalar Equipamiento Capital (20 centros) | 40h | 2011-10-17 | 2011-10-24 | 74 | 0d |  | Asist. Deposito1; Asist. Deposito2 | 80h |
| 95 | 1.4.4.3.2 | Embalar Equipamiento Interior (20 centros) | 40h | 2011-10-17 | 2011-10-24 | 74 | 0d |  | Asist. Deposito3; Asist. Deposito4 | 80h |
| 96 | 1.4.4.4 | **Controlar equipamiento** | 2.5d | 2011-10-24 | 2011-10-26 |  | 63.1d |  |  | 80h |
| 97 | 1.4.4.4.1 | Controlar Equipamiento Capital (20 centros) | 20h | 2011-10-24 | 2011-10-26 | 94 | 63.1d |  | Asist. Deposito1; Asist. Deposito2 | 40h |
| 98 | 1.4.4.4.2 | Controlar Equipamiento Interior (20 centros) | 20h | 2011-10-24 | 2011-10-26 | 95 | 63.1d |  | Asist. Deposito3; Asist. Deposito4 | 40h |

| ID | WBS | Task | Duration | Start | Finish | Predecessors | Total slack | Resources | Work |
| --- | --- | --- | --- | --- | --- | --- | --- | --- | --- |
| 99 | 1.4.5 | **Equipamientos y materiales entregados** | 45.6d | 2011-10-24 | 2011-12-27 | 93 | 0d |  | 1239h |
| 100 | 1.4.5.1 | Seleccionar servicio de transporte | 40h | 2011-10-24 | 2011-10-31 | 93 | 0d | Ing Herbert Powell | 40h |
| 101 | 1.4.5.2 | **Hoja de ruta definida** | 10d | 2011-10-31 | 2011-11-14 | 100 | 0d |  | 80h |
| 102 | 1.4.5.2.1 | Confeccionar hoja de ruta | 40h | 2011-10-31 | 2011-11-07 | 100 | 0d | Ing Herbert Powell | 40h |
| 103 | 1.4.5.2.2 | Gestionar hoja de ruta | 40h | 2011-11-07 | 2011-11-14 | 102 | 0d | Ing Herbert Powell | 40h |
| 104 | 1.4.5.3 | **Cargar equipamiento y materiales** | 13.5d | 2011-11-14 | 2011-12-01 | 101 | 0d |  | 480h |
| 105 | 1.4.5.3.1 | Cargar equipamientos y materiales Interior (20 centros) | 48h | 2011-11-14 | 2011-11-22 |  | 0d | Asist. Deposito1; Asist. Deposito2; Asist. Deposito3; Asist. Deposito4; Asist. Deposito5 | 240h |
| 106 | 1.4.5.3.2 | Cargar equipamiento y materiales Capital (20 centros) | 60h | 2011-11-22 | 2011-12-01 | 105 | 0d | Asist. Deposito1; Asist. Deposito2; Asist. Deposito3; Asist. Deposito4 | 240h |
| 107 | 1.4.5.4 | **Transportar equipamientos y materiales** | 8.35d | 2011-12-01 | 2011-12-14 | 106 | 0d |  | 400h |
| 108 | 1.4.5.4.1 | Transportar equipamientos y materiales Interior (20 centros) | 33.39h | 2011-12-01 | 2011-12-08 |  | 0d | Transportista1; Transportista2; Transportitas3; Transportitas4; Transportista5; Transportista6 | 200h |
| 109 | 1.4.5.4.2 | Transportar equipamiento y materiales Capital (20 centros) | 33.45h | 2011-12-08 | 2011-12-14 | 108 | 0d | Transportista1; Transportista2; Transportista3; Transportista4; Transportista5; Transportista6 | 200h |
| 110 | 1.4.5.5 | **Descargar equipamientos y materiales** | 6.23d | 2011-12-14 | 2011-12-22 | 109 | 0d |  | 199h |
| 111 | 1.4.5.5.1 | Descargar equipamientos y materiales Interior (20 centros) | 24.81h | 2011-12-14 | 2011-12-19 |  | 0d | Asist. Deposito1; Asist. Deposito2; Asist. Deposito3; Asist. Deposito4 | 99h |
| 112 | 1.4.5.5.2 | Descargar equipamiento y materiales Capital (20 centros) | 25.06h | 2011-12-19 | 2011-12-22 | 111 | 0d | Asist. Deposito1; Asist. Deposito2; Asist. Deposito3; Asist. Deposito4 | 100h |
| 113 | 1.4.5.6 | **Controlar equipamientos y materiales** | 2.51d | 2011-12-22 | 2011-12-27 | 112 | 0d |  | 40h |
| 114 | 1.4.5.6.1 | Controlar equipamientos y materiales Interior (20 centros) | 10.05h | 2011-12-22 | 2011-12-23 |  | 0d | Asist. Deposito1; Asist. Deposito2 | 20h |
| 115 | 1.4.5.6.2 | Controlar equipamiento y materiales Capital (20 centros) | 10.05h | 2011-12-23 | 2011-12-27 | 114 | 0d | Asist. Deposito1; Asist. Deposito2 | 20h |
| 116 | 1.5 | **Centros de capacitación instalados** | 20d | 2011-12-27 | 2012-01-24 |  | 0d |  | 3840h |
| 117 | 1.5.1 | **Infraestructura instalada** | 20d | 2011-12-27 | 2012-01-24 |  | 0d |  | 3840h |
| 118 | 1.5.1.1 | Montar mobiliario | 96h | 2011-12-27 | 2012-01-12 | 99 | 0d | Asistente Instalacion1; Asistente Instalacion2; Asistente Instalacion3; Asistente Instalacion4; Asistente Instalacion5; Asistente Instalacion6; Asistente Instalacion7; Asistente Instalacion8; Asistente Instalacion9; Asistente Instalacion10 | 960h |
| 119 | 1.5.1.2 | Realizar instalación eléctrica | 96h | 2011-12-27 | 2012-01-12 | 99 | 0d | Electricista Instalacion1; Electricista Instalacion2; Electricista Instalacion3; Electricista Instalacion4; Electricista Instalacion5; Electricista Instalacion6; Electricista Instalacion7; Electricista Instalacion8; Electricista Instalacion9; Electricista Instalacion10 | 960h |
| 120 | 1.5.1.3 | Realizar cableado estructurado | 96h | 2011-12-27 | 2012-01-12 | 99 | 0d | Tecnico Instalacion 01; Tecnico Instalacion 02; Tecnico Instalacion 03; Tecnico Instalacion 04; Tecnico Instalacion 05; Tecnico Instalacion 06; Tecnico Instalacion 07; Tecnico Instalacion 08; Tecnico Instalacion 09; Tecnico Instalacion 10 | 960h |
| 121 | 1.5.1.4 | Instalación y configuración de acceso a internet | 64h | 2012-01-12 | 2012-01-24 | 118, 119, 120 | 0d | Asistente Instalacion1; Asistente Instalacion2; Asistente Instalacion3; Asistente Instalacion4; Asistente Instalacion5 | 320h |
| 122 | 1.5.1.5 | Configuración de equipos informáticos en red de datos | 64h | 2012-01-12 | 2012-01-24 | 118, 119, 120 | 0d | Asistente Instalacion6; Asistente Instalacion7; Asistente Instalacion8; Asistente Instalacion9; Asistente Instalacion10; Asistente Instalacion11; Asistente Instalacion12; Asistente Instalacion13; Asistente Instalacion14; Asistente Instalacion15 | 640h |

| ID | WBS | Task | Duration | Start | Finish | Predecessors | Total slack | Free slack | Resources | Work |
| --- | --- | --- | --- | --- | --- | --- | --- | --- | --- | --- |
| 123 | 1.6 | **Docentes capacitados** | 118.29d | 2011-06-27 | 2011-12-09 |  | 31.92d |  |  | 2536h |
| 124 | 1.6.1 | **Capacitadores seleccionados** | 6d | 2011-08-12 | 2011-08-22 | 10 | 31.92d | 0d |  | 168h |
| 125 | 1.6.1.1 | Confeccionar método de selección | 8h | 2011-08-12 | 2011-08-15 |  | 31.92d | 0d | Capacitador1 | 8h |
| 126 | 1.6.1.2 | Comunicar a instituciones educativas | 20h | 2011-08-15 | 2011-08-18 | 125 | 31.92d | 0d | Capacitador2; Capacitador3; Capacitador4; Capacitador1 | 80h |
| 127 | 1.6.1.3 | Evaluar capacitadores | 20h | 2011-08-18 | 2011-08-22 | 126 | 31.92d |  | Capacitador1; Capacitador2; Capacitador3; Capacitador4 | 80h |
| 128 | 1.6.2 | **Programa de contenidos** | 7.5d | 2011-08-22 | 2011-09-01 | 124 | 31.92d |  |  | 128h |
| 129 | 1.6.2.1 | Definir objetivos específicos | 8h | 2011-08-22 | 2011-08-23 |  | 31.92d | 0d | Capacitador1 | 8h |
| 130 | 1.6.2.2 | Confeccionar temario | 8h | 2011-08-23 | 2011-08-24 | 129 | 31.92d | 0d | Capacitador1 | 8h |
| 131 | 1.6.2.3 | Confeccionar actividades | 8h | 2011-08-24 | 2011-08-25 | 130 | 31.92d | 0d | Capacitador1; Capacitador2 | 16h |
| 132 | 1.6.2.4 | Establecer duración y método de capacitación | 8h | 2011-08-25 | 2011-08-26 | 131 | 31.92d | 0d | Capacitador1 | 8h |
| 133 | 1.6.2.5 | Definir material de estudio | 8h | 2011-08-26 | 2011-08-29 | 132 | 31.92d | 0d | Capacitador1 | 8h |
| 134 | 1.6.2.6 | Gestionar material de estudio | 20h | 2011-08-29 | 2011-09-01 | 133 | 31.92d |  | Capacitador1; Capacitador2; Capacitador3; Capacitador4 | 80h |
| 135 | 1.6.3 | **Docentes seleccionados** | 6d | 2011-06-27 | 2011-07-05 | 13 | 73.21d | 41.29d |  | 168h |
| 136 | 1.6.3.1 | Confeccionar perfil del docente | 8h | 2011-06-27 | 2011-06-28 |  | 73.21d | 0d | Capacitador1 | 8h |
| 137 | 1.6.3.2 | Comunicar perfil a escuelas | 20h | 2011-06-28 | 2011-07-01 | 136 | 73.21d | 0d | Capacitador1; Capacitador2; Capacitador3; Capacitador4 | 80h |
| 138 | 1.6.3.3 | Evaluar docentes | 20h | 2011-07-01 | 2011-07-05 | 137 | 73.21d |  | Capacitador1; Capacitador2; Capacitador3; Capacitador4 | 80h |
| 139 | 1.6.4 | **Capacitación docente** | 71d | 2011-09-01 | 2011-12-09 | 128, 135 | 31.92d |  |  | 2072h |
| 140 | 1.6.4.1 | **Capacitación centralizada** | 39d | 2011-09-01 | 2011-10-26 |  | 31.92d | 0d |  | 952h |
| 141 | 1.6.4.1.1 | Construir cronograma de llegada y estadía de docentes | 40h | 2011-09-01 | 2011-09-08 |  | 31.92d | 0d | Capacitador1 | 40h |
| 142 | 1.6.4.1.2 | Preparar alojamiento de los docentes | 80h | 2011-09-08 | 2011-09-22 | 141 | 31.92d | 0d | Organizador1; Organizador2; Organizador3 | 240h |
| 143 | 1.6.4.1.3 | Coordinar llegada de docentes | 32h | 2011-09-22 | 2011-09-28 | 142 | 31.92d | 0d | Capacitador1 | 32h |
| 144 | 1.6.4.1.4 | Dictar capacitación | 80h | 2011-09-28 | 2011-10-12 | 143 | 31.92d | 0d | Capacitador1; Capacitador2; Capacitador3; Capacitador4 | 320h |
| 145 | 1.6.4.1.5 | Plantear plan de acción a implementar | 80h | 2011-10-12 | 2011-10-26 | 144 | 31.92d |  | Capacitador1; Capacitador2; Capacitador3; Capacitador4 | 320h |
| 146 | 1.6.4.2 | **Capacitación itinerante** | 32d | 2011-10-26 | 2011-12-09 | 140 | 31.92d |  |  | 1120h |
| 147 | 1.6.4.2.1 | Coordinar cronograma de visitas | 48h | 2011-10-26 | 2011-11-03 | 13 | 31.92d | 0d | Coordinador1; Coordinador2; Coordinador3; Coordinador4; Coordinador5 | 240h |
| 148 | 1.6.4.2.2 | Gestionar visita de los capacitadores | 48h | 2011-11-03 | 2011-11-11 | 147 | 31.92d | 0d | Coordinador1; Coordinador2; Coordinador3; Coordinador4; Coordinador5 | 240h |
| 149 | 1.6.4.2.3 | Dictar capacitación | 80h | 2011-11-11 | 2011-11-25 | 148 | 31.92d | 0d | Capacitador1; Capacitador2; Capacitador3; Capacitador4 | 320h |
| 150 | 1.6.4.2.4 | Presentar plan de acción | 80h | 2011-11-25 | 2011-12-09 | 149 | 31.92d |  | Coordinador1; Coordinador2; Coordinador3; Coordinador4 | 320h |
